# Geofly

Schedule from MS Project, 2007-06-26 to 2007-07-25.
icss

## Calendars

- 标准: Mon-Fri 08:00-12:00, 13:00-17:00; Sat-Sun off. Exceptions (off unless hours are given): 2007-07-07 to 2007-07-08 08:00-12:00, 13:00-17:00, 2007-07-14 08:00-12:00, 13:00-17:00, 2007-07-21 to 2007-07-22 08:00-12:00, 13:00-17:00.

## Resources

| Resource |
| --- |
| 程之兴 |
| 钟晨 |
| 姬广钊 |
| 俞斐 |
| 施会华 |
| 许吉安 |
| 缪陆明 |
| 莫瑞宏 |

## Schedule

| ID | WBS | Task | Type | Duration | Start | Finish | Predecessors | Total slack | Free slack | Constraint | Resources | Work |
| --- | --- | --- | --- | --- | --- | --- | --- | --- | --- | --- | --- | --- |
| 1 | 1 | **Geofly协同办公系统** |  | 27d | 2007-06-26 08:00 | 2007-07-25 17:00 |  | 0d |  |  |  | 1136h |
| 2 | 1.1 | **项目立项** |  | 2d | 2007-06-26 08:00 | 2007-06-27 17:00 |  | 23d |  |  |  | 98h |
| 3 | 1.1.1 | 确立项目范围 |  | 0.5d | 2007-06-26 08:00 | 2007-06-26 12:00 |  | 25d | 0d | start no earlier than 2007-06-26 08:00 | 程之兴 [50%]; 施会华 [50%]; 钟晨 [50%] | 6h |
| 4 | 1.1.2 | 定义预备资源 |  | 1.5d | 2007-06-26 13:00 | 2007-06-27 17:00 | 3 | 25d |  |  | 姬广钊 [50%]; 俞斐 [50%] | 12h |
| 5 | 1.1.3 | 项目前期基础知识学习 |  | 2d | 2007-06-26 08:00 | 2007-06-27 17:00 |  | 25d |  | finish no earlier than 2007-06-27 17:00 | 程之兴 [50%]; 姬广钊 [50%]; 缪陆明; 莫瑞宏; 施会华 [50%]; 许吉安 [50%]; 俞斐 [50%]; 钟晨 [50%] | 80h |
| 6 | 1.1.4 | 完成项目立项 | milestone | 0d | 2007-06-27 08:00 | 2007-06-27 08:00 |  | 22d | 0d | start no earlier than 2007-06-27 08:00 | 程之兴 |  |
| 7 | 1.2 | **明确需求** |  | 4d | 2007-06-27 08:00 | 2007-07-02 17:00 |  | 22d |  |  |  | 40h |
| 8 | 1.2.1 | 需求调研 |  | 2d | 2007-06-27 08:00 | 2007-06-28 17:00 | 6 | 22d | 0d |  | 许吉安 [50%]; 程之兴 [50%] | 16h |
| 9 | 1.2.2 | 项目设计 |  | 1d | 2007-06-29 08:00 | 2007-06-29 17:00 | 8 | 22d | 0d |  | 程之兴 [50%]; 俞斐 | 12h |
| 10 | 1.2.3 | 撰写需求说明书 |  | 1d | 2007-07-02 08:00 | 2007-07-02 17:00 | 9 | 22d |  |  | 施会华 [50%]; 钟晨 [50%]; 许吉安 [50%] | 12h |
| 11 | 1.2.4 | 提交需求说明书 | milestone | 0d | 2007-07-02 08:00 | 2007-07-02 08:00 |  | 23d |  |  | 程之兴 |  |
| 12 | 1.3 | **系统原型实现** |  | 5.5d | 2007-07-02 08:00 | 2007-07-07 12:00 |  | 0d |  |  |  | 268h |
| 13 | 1.3.1 | 原型设计 |  | 1d | 2007-07-02 08:00 | 2007-07-02 17:00 |  | 0d |  |  | 程之兴 [50%]; 姬广钊 [50%] | 8h |
| 14 | 1.3.2 | 项目设计学习 |  | 1d | 2007-07-02 08:00 | 2007-07-02 17:00 |  | 22d |  |  | 程之兴 [50%]; 姬广钊 [50%]; 缪陆明; 莫瑞宏; 施会华 [50%]; 许吉安 [50%]; 俞斐; 钟晨 [50%] | 44h |
| 15 | 1.3.3 | **原型编码** |  | 4d | 2007-07-03 08:00 | 2007-07-06 17:00 |  | 0d |  |  |  | 208h |
| 16 | 1.3.3.1 | 系统管理 |  | 4d | 2007-07-03 08:00 | 2007-07-06 17:00 | 13 | 0d |  |  | 程之兴; 姬广钊 | 64h |
| 17 | 1.3.3.2 | 个人办公 |  | 4d | 2007-07-03 08:00 | 2007-07-06 17:00 | 13 | 0d |  |  | 钟晨; 莫瑞宏; 许吉安 | 64h |
| 18 | 1.3.3.3 | 会议管理 |  | 4d | 2007-07-03 08:00 | 2007-07-06 17:00 | 13 | 0d |  |  | 施会华; 俞斐; 缪陆明 [50%] | 80h |
| 19 | 1.3.4 | 提交原型 | milestone | 0d | 2007-07-06 17:00 | 2007-07-06 17:00 | 18 | 18d |  |  | 程之兴 |  |
| 20 | 1.3.5 | 原型演示 |  | 0.5d | 2007-07-07 08:00 | 2007-07-07 12:00 | 15 | 0d |  |  | 俞斐; 姬广钊 | 8h |
| 21 | 1.4 | **系统设计** |  | 4.5d | 2007-07-07 13:00 | 2007-07-11 17:00 |  | 0d |  |  |  | 120h |
| 22 | 1.4.1 | **概要设计** |  | 2d | 2007-07-07 13:00 | 2007-07-09 12:00 | 20 | 0d |  |  |  | 40h |
| 23 | 1.4.1.1 | 初步软件规格规范 |  | 1d | 2007-07-07 13:00 | 2007-07-08 12:00 | 20 | 1d |  | finish no earlier than 2007-07-07 17:00 | 程之兴 [50%]; 莫瑞宏 | 12h |
| 24 | 1.4.1.2 | 系统模块逻辑结构 |  | 1.5d | 2007-07-07 13:00 | 2007-07-08 17:00 | 20 | 0.5d |  |  | 钟晨 [50%]; 许吉安 [50%] | 12h |
| 25 | 1.4.1.3 | 制定功能规范 |  | 2d | 2007-07-07 13:00 | 2007-07-09 12:00 |  | 0d |  |  | 俞斐 [50%]; 缪陆明 | 16h |
| 26 | 1.4.1.4 | 完成概要设计/提 | milestone | 0d | 2007-07-09 12:00 | 2007-07-09 12:00 | 25 | 0d |  |  | 程之兴 |  |

| ID | WBS | Task | Type | Duration | Start | Finish | Predecessors | Total slack | Constraint | Resources | Work |
| --- | --- | --- | --- | --- | --- | --- | --- | --- | --- | --- | --- |
| 27 | 1.4.2 | **详细设计** |  | 2.5d | 2007-07-09 13:00 | 2007-07-11 17:00 | 22 | 0d |  |  | 80h |
| 28 | 1.4.2.1 | 制定功能规范 |  | 0.5d | 2007-07-10 08:00 | 2007-07-10 12:00 | 26FS+0.5d | 14.5d | start no earlier than 2007-07-08 08:00 | 程之兴 | 4h |
| 29 | 1.4.2.2 | 功能模块设计 |  | 1d | 2007-07-09 13:00 | 2007-07-10 12:00 | 26 | 1d |  | 俞斐; 许吉安 | 16h |
| 30 | 1.4.2.3 | 接口的设计与定义 |  | 1.5d | 2007-07-09 13:00 | 2007-07-10 17:00 | 26 | 0.5d |  | 施会华; 钟晨 | 24h |
| 31 | 1.4.2.4 | 数据库设计 |  | 2d | 2007-07-09 13:00 | 2007-07-11 12:00 | 25 | 0d |  | 姬广钊; 缪陆明 | 32h |
| 32 | 1.4.2.5 | 撰写详细设计文档 |  | 0.5d | 2007-07-11 13:00 | 2007-07-11 17:00 | 31, 29, 30 | 0d |  | 许吉安 | 4h |
| 33 | 1.4.2.6 | 提交详细设计文档 | milestone | 0d | 2007-07-11 17:00 | 2007-07-11 17:00 | 32 | 0d |  | 程之兴 |  |
| 34 | 1.5 | **系统开发** |  | 10.5d | 2007-07-12 08:00 | 2007-07-23 12:00 | 33 | 0d |  |  | 524h |
| 35 | 1.5.1 | 审查功能规范 |  | 0.5d | 2007-07-12 08:00 | 2007-07-12 12:00 | 33 | 10d |  | 程之兴 [50%]; 俞斐 | 6h |
| 36 | 1.5.2 | 确立模块化/分层参数 |  | 0.5d | 2007-07-12 08:00 | 2007-07-12 12:00 | 33 | 0d |  | 姬广钊; 钟晨 | 8h |
| 37 | 1.5.3 | 分配任务给开发人员 | milestone | 0d | 2007-07-12 12:00 | 2007-07-12 12:00 | 36 | 0d |  | 程之兴 |  |
| 38 | 1.5.4 | **编写代码** |  | 9d | 2007-07-12 13:00 | 2007-07-22 12:00 | 37 | 0d |  |  | 458h |
| 39 | 1.5.4.1 | **界面制作代码** |  | 3d | 2007-07-12 13:00 | 2007-07-16 12:00 |  | 0d |  |  | 114h |
| 40 | 1.5.4.1.1 | 系统管理部分 |  | 2d | 2007-07-12 13:00 | 2007-07-14 12:00 | 37 | 7d |  | 程之兴; 姬广钊 | 32h |
| 41 | 1.5.4.1.2 | 会议管理部分 |  | 2d | 2007-07-12 13:00 | 2007-07-14 12:00 | 37 | 7d | start no earlier than 2007-07-11 08:00 | 施会华; 缪陆明; 莫瑞宏 [50%] | 40h |
| 42 | 1.5.4.1.3 | 个人办公部分 |  | 3d | 2007-07-12 13:00 | 2007-07-16 12:00 | 37 | 0d |  | 钟晨; 俞斐 [50%]; 许吉安; 莫瑞宏 [50%] | 42h |
| 43 | 1.5.4.2 | **功能实现代码** |  | 6d | 2007-07-16 13:00 | 2007-07-22 12:00 | 42 | 0d |  |  | 288h |
| 44 | 1.5.4.2.1 | **系统管理部分** |  | 6d | 2007-07-16 13:00 | 2007-07-22 12:00 | 37FS+3d | 0d |  |  | 96h |
| 45 | 1.5.4.2.1.1 | 部门管理 |  | 6d | 2007-07-16 13:00 | 2007-07-22 12:00 | 42 | 0d |  | 程之兴 [50%] | 24h |
| 46 | 1.5.4.2.1.2 | 角色管理 |  | 6d | 2007-07-16 13:00 | 2007-07-22 12:00 | 42 | 0d |  | 俞斐 [50%] | 24h |
| 47 | 1.5.4.2.1.3 | 用户管理 |  | 6d | 2007-07-16 13:00 | 2007-07-22 12:00 |  | 0d |  | 莫瑞宏 | 48h |
| 48 | 1.5.4.2.2 | **会议管理部分** |  | 5d | 2007-07-16 13:00 | 2007-07-21 12:00 | 37FS+3d | 1d |  |  | 120h |
| 49 | 1.5.4.2.2.1 | 会议室管理 |  | 5d | 2007-07-16 13:00 | 2007-07-21 12:00 |  | 1d |  | 施会华 | 40h |
| 50 | 1.5.4.2.2.2 | 会议管理 |  | 5d | 2007-07-16 13:00 | 2007-07-21 12:00 |  | 1d |  | 缪陆明 | 40h |
| 51 | 1.5.4.2.2.3 | 预约管理 |  | 5d | 2007-07-16 13:00 | 2007-07-21 12:00 |  | 1d |  | 钟晨 | 40h |

| ID | WBS | Task | Duration | Start | Finish | Predecessors | Total slack | Resources | Work |
| --- | --- | --- | --- | --- | --- | --- | --- | --- | --- |
| 52 | 1.5.4.2.3 | **个人办公部分** | 6d | 2007-07-16 13:00 | 2007-07-22 12:00 | 37FS+3d | 0d |  | 72h |
| 53 | 1.5.4.2.3.1 | 个人信息查询与编辑 | 1d | 2007-07-16 13:00 | 2007-07-17 12:00 | 37FS+3d | 0d | 许吉安; 俞斐 [50%] | 12h |
| 54 | 1.5.4.2.3.2 | 工作安排 | 1d | 2007-07-17 13:00 | 2007-07-18 12:00 | 53 | 0d | 许吉安; 俞斐 [50%] | 12h |
| 55 | 1.5.4.2.3.3 | 名片夹 | 1d | 2007-07-18 13:00 | 2007-07-19 12:00 | 54 | 0d | 许吉安; 俞斐 [50%] | 12h |
| 56 | 1.5.4.2.3.4 | 公司通讯录 | 1d | 2007-07-19 13:00 | 2007-07-20 12:00 | 55 | 0d | 许吉安; 俞斐 [50%] | 12h |
| 57 | 1.5.4.2.3.5 | 在线信息 | 1d | 2007-07-20 13:00 | 2007-07-21 12:00 | 56 | 1d | 许吉安 | 8h |
| 58 | 1.5.4.2.3.6 | 个人文件夹 | 1d | 2007-07-20 13:00 | 2007-07-21 12:00 | 56 | 0d | 俞斐 [50%] | 4h |
| 59 | 1.5.4.2.3.7 | 个人会议安排 | 1d | 2007-07-21 13:00 | 2007-07-22 12:00 | 58 | 0d | 许吉安; 俞斐 [50%] | 12h |
| 60 | 1.5.4.3 | **数据库交互代码** | 6d | 2007-07-16 13:00 | 2007-07-22 12:00 | 37FS+3d | 0d |  | 56h |
| 61 | 1.5.4.3.1 | 用户表 | 0.5d | 2007-07-16 13:00 | 2007-07-16 17:00 | 37FS+3d | 0d | 程之兴 [50%]; 姬广钊 [50%] | 4h |
| 62 | 1.5.4.3.2 | 角色表 | 0.5d | 2007-07-17 08:00 | 2007-07-17 12:00 | 61 | 0d | 程之兴 [50%]; 姬广钊 [50%] | 4h |
| 63 | 1.5.4.3.3 | 部门表 | 0.5d | 2007-07-17 13:00 | 2007-07-17 17:00 | 62 | 0d | 程之兴 [50%]; 姬广钊 [50%] | 4h |
| 64 | 1.5.4.3.4 | 代办人员表 | 0.5d | 2007-07-18 08:00 | 2007-07-18 12:00 | 63 | 4d | 姬广钊 | 4h |
| 65 | 1.5.4.3.5 | 读者表 | 0.5d | 2007-07-18 08:00 | 2007-07-18 12:00 | 63 | 0d | 程之兴 [50%] | 2h |
| 66 | 1.5.4.3.6 | 在线信息表 | 0.5d | 2007-07-18 13:00 | 2007-07-18 17:00 | 65 | 3.5d | 程之兴 [50%] | 2h |
| 67 | 1.5.4.3.7 | 名片夹分类表 | 0.5d | 2007-07-18 13:00 | 2007-07-18 17:00 | 65 | 0d | 姬广钊 | 4h |
| 68 | 1.5.4.3.8 | 名片表 | 0.5d | 2007-07-19 08:00 | 2007-07-19 12:00 | 67 | 3d | 姬广钊 | 4h |
| 69 | 1.5.4.3.9 | 代办工作表 | 0.5d | 2007-07-19 08:00 | 2007-07-19 12:00 | 67 | 0d | 程之兴 [50%] | 2h |
| 70 | 1.5.4.3.10 | 查询个人会议表 | 0.5d | 2007-07-19 13:00 | 2007-07-19 17:00 | 69 | 0d | 程之兴 [50%]; 姬广钊 [50%] | 4h |
| 71 | 1.5.4.3.11 | 会议表 | 0.5d | 2007-07-20 08:00 | 2007-07-20 12:00 | 70 | 0d | 程之兴 [50%]; 姬广钊 [50%] | 4h |
| 72 | 1.5.4.3.12 | 会议室表 | 1d | 2007-07-20 13:00 | 2007-07-21 12:00 | 71 | 1d | 程之兴 [50%] | 4h |
| 73 | 1.5.4.3.13 | 预约表 | 1d | 2007-07-20 13:00 | 2007-07-21 12:00 | 71 | 0d | 姬广钊 [50%] | 4h |
| 74 | 1.5.4.3.14 | 文件夹表 | 0.5d | 2007-07-21 13:00 | 2007-07-21 17:00 | 73 | 0d | 程之兴 [50%]; 姬广钊 | 6h |
| 75 | 1.5.4.3.15 | 文件表 | 0.5d | 2007-07-22 08:00 | 2007-07-22 12:00 | 74 | 0d | 程之兴 [50%]; 姬广钊 [50%] | 4h |

| ID | WBS | Task | Type | Duration | Start | Finish | Predecessors | Total slack | Free slack | Constraint | Resources | Work |
| --- | --- | --- | --- | --- | --- | --- | --- | --- | --- | --- | --- | --- |
| 76 | 1.5.5 | **开发人员初步测试** |  | 1d | 2007-07-22 13:00 | 2007-07-23 12:00 | 60 | 0d |  |  |  | 36h |
| 77 | 1.5.5.1 | 测试界面 |  | 1d | 2007-07-22 13:00 | 2007-07-23 12:00 | 60 | 0d |  |  | 钟晨 [50%]; 施会华 [50%] | 8h |
| 78 | 1.5.5.2 | 测试功能模块 |  | 1d | 2007-07-22 13:00 | 2007-07-23 12:00 | 60 | 0d |  |  | 许吉安; 莫瑞宏 [50%]; 缪陆明 [50%] | 16h |
| 79 | 1.5.5.3 | 测试数据库 |  | 1d | 2007-07-22 13:00 | 2007-07-23 12:00 | 60 | 0d |  |  | 程之兴 [50%]; 姬广钊 | 12h |
| 80 | 1.5.6 | 撰写用户指南 |  | 1d | 2007-07-22 13:00 | 2007-07-23 12:00 | 38 | 0d |  |  | 钟晨 [50%]; 缪陆明 [50%]; 莫瑞宏 [50%]; 程之兴 [50%] | 16h |
| 81 | 1.6 | **测试** |  | 2.5d | 2007-07-23 13:00 | 2007-07-25 17:00 |  | 0d |  |  |  | 70h |
| 82 | 1.6.1 | **单元测试** |  | 2d | 2007-07-23 13:00 | 2007-07-25 12:00 | 34 | 0d |  |  |  | 42h |
| 83 | 1.6.1.1 | 审查模块代码 |  | 1d | 2007-07-23 13:00 | 2007-07-24 12:00 | 38 | 1.5d |  |  | 程之兴 | 8h |
| 84 | 1.6.1.2 | 测试各个功能模块 |  | 1d | 2007-07-23 13:00 | 2007-07-24 12:00 | 38 | 1.5d |  |  | 姬广钊; 莫瑞宏 [50%] | 12h |
| 85 | 1.6.1.3 | 查找异常 |  | 1d | 2007-07-23 13:00 | 2007-07-24 12:00 | 38 | 0d |  |  | 许吉安 [50%]; 缪陆明 [50%] | 8h |
| 86 | 1.6.1.4 | 修改代码 |  | 0.5d | 2007-07-24 13:00 | 2007-07-24 17:00 | 85 | 0d |  |  | 钟晨 [50%]; 俞斐 [50%]; 施会华 [50%] | 6h |
| 87 | 1.6.1.5 | 撰写模块测试文档和用例 |  | 0.5d | 2007-07-25 08:00 | 2007-07-25 12:00 | 86 | 0.5d |  |  | 程之兴 | 4h |
| 88 | 1.6.1.6 | 更新用户指南 |  | 0.5d | 2007-07-25 08:00 | 2007-07-25 12:00 | 86 | 0.5d | 0d |  | 俞斐 | 4h |
| 89 | 1.6.2 | **整体测试** |  | 1d | 2007-07-25 08:00 | 2007-07-25 17:00 | 86 | 0d |  |  |  | 28h |
| 90 | 1.6.2.1 | 测试模块集成 |  | 1d | 2007-07-25 08:00 | 2007-07-25 17:00 | 86 | 0d |  |  | 姬广钊 | 8h |
| 91 | 1.6.2.2 | 查找不合规格的异常 |  | 0.5d | 2007-07-25 08:00 | 2007-07-25 12:00 | 86 | 0.5d |  |  | 缪陆明 | 4h |
| 92 | 1.6.2.3 | 重新修改代码 |  | 0.5d | 2007-07-25 08:00 | 2007-07-25 12:00 | 86 | 0d |  |  | 莫瑞宏 | 4h |
| 93 | 1.6.2.4 | 重新测试系统 |  | 0.5d | 2007-07-25 13:00 | 2007-07-25 17:00 | 92 | 0d |  |  | 施会华 | 4h |
| 94 | 1.6.2.5 | 撰写系统测试文档 |  | 0.5d | 2007-07-25 13:00 | 2007-07-25 17:00 | 92 | 0d |  |  | 许吉安 [50%]; 莫瑞宏 | 4h |
| 95 | 1.6.2.6 | 更新用户指南 |  | 0.5d | 2007-07-25 13:00 | 2007-07-25 17:00 | 92 | 0d |  |  | 俞斐 | 4h |
| 96 | 1.6.2.7 | 提交测试文档和系统代码 | milestone | 0d | 2007-07-25 17:00 | 2007-07-25 17:00 | 94 | 0d |  |  | 程之兴 |  |
| 97 | 1.7 | **文档** |  | 1d | 2007-07-24 17:00 | 2007-07-25 17:00 | 86 | 0d |  |  |  | 16h |
| 98 | 1.7.1 | 更新用户指南 | milestone | 0d | 2007-07-25 12:00 | 2007-07-25 12:00 | 88 | 0.5d |  |  | 程之兴 |  |
| 99 | 1.7.2 | 撰写系统说明 |  | 0.5d | 2007-07-25 08:00 | 2007-07-25 12:00 |  | 0.5d |  |  | 许吉安 | 4h |
| 100 | 1.7.3 | 编写常见用例 |  | 1d | 2007-07-25 08:00 | 2007-07-25 17:00 |  | 0d |  | start no earlier than 2007-07-25 08:00 | 钟晨 | 8h |
| 101 | 1.7.4 | 撰写帮助文档 |  | 0.5d | 2007-07-25 08:00 | 2007-07-25 12:00 |  | 0.5d |  | start no earlier than 2007-07-25 08:00 | 施会华 | 4h |
| 102 | 1.7.5 | 完成文档提交 | milestone | 0d | 2007-07-24 17:00 | 2007-07-24 17:00 |  | 1d |  |  | 程之兴 |  |
